# Galpon Minero - Construccion 2026

Schedule from Primavera P6, 2026-06-01 to 2026-09-28, data date 2026-06-03, costs in CLP1.
Must finish by 2026-09-28

## Calendars

- Estandar Lun-Vie 8h: Mon-Fri 08:00-17:00; Sat-Sun off.

## Resources

| Resource | Group |
| --- | --- |
| Mano de Obra 12.000 CLP/HH | labor |
| Materiales y Equipos |  |
| Mano de Obra 8.500 CLP/HH | labor |
| Mano de Obra 10.000 CLP/HH | labor |
| Mano de Obra 9.500 CLP/HH | labor |

## Schedule

| ID | WBS | Activity | Duration | Start | Finish | Predecessors | Resources | Cost |
| --- | --- | --- | --- | --- | --- | --- | --- | --- |
|  | 1 | **FASE 1: INGENIERÍA Y PERMISOS** |  | 2026-06-01 | 2026-06-30 |  |  |  |
|  | 1 | **Estudios de Terreno** |  | 2026-06-01 | 2026-06-10 |  |  |  |
| 1.1 |  | Levantamiento topográfico del terreno | 4d | 2026-06-01 | 2026-06-05 |  | Mano de Obra 12.000 CLP/HH [200 h] | 2,400,000 |
| 1.2 |  | Estudio de mecánica de suelos (EMS) | 9d | 2026-06-01 | 2026-06-10 |  | Mano de Obra 12.000 CLP/HH [40 h]; Materiales y Equipos [1 h] | 3,327,700 |
|  | 2 | **Arquitectura** |  | 2026-06-03 | 2026-06-15 |  |  |  |
| 1.6 |  | Planos de arquitectura (plantas, cortes) | 12d | 2026-06-03 | 2026-06-15 | 1.1 | Mano de Obra 12.000 CLP/HH [96 h]; Materiales y Equipos [1 h] | 3,105,600 |
|  | 3 | **Ingeniería Estructural** |  | 2026-06-03 | 2026-06-20 |  |  |  |
| 1.3 |  | Ingeniería básica estructural | 12d | 2026-06-03 | 2026-06-15 |  | Mano de Obra 12.000 CLP/HH [40 h]; Materiales y Equipos [1 h] | 4,806,700 |
| 1.4 |  | Cálculo estructural galpón metálico | 13d | 2026-06-05 | 2026-06-18 | 1.3 | Mano de Obra 12.000 CLP/HH [50 h]; Materiales y Equipos [1 h] | 6,285,600 |
| 1.5 |  | Memoria de cálculo fundaciones | 13d | 2026-06-05 | 2026-06-18 | 1.3 | Mano de Obra 12.000 CLP/HH [20 h]; Materiales y Equipos [1 h] | 2,588,200 |
| 1.7 |  | Planos de estructuras metálicas | 15d | 2026-06-05 | 2026-06-20 | 1.4, 1.5 | Mano de Obra 12.000 CLP/HH [54 h]; Materiales y Equipos [1 h] | 3,727,800 |
|  | 4 | **Ingeniería Eléctrica** |  | 2026-06-08 | 2026-06-20 |  |  |  |
| 1.8 |  | Planos de instalaciones eléctricas | 12d | 2026-06-08 | 2026-06-20 | 1.6 | Mano de Obra 12.000 CLP/HH [32 h]; Materiales y Equipos [1 h] | 1,892,800 |
|  | 5 | **Ingeniería Sanitaria** |  | 2026-06-08 | 2026-06-18 |  |  |  |
| 1.9 |  | Planos instalaciones sanitarias | 10d | 2026-06-08 | 2026-06-18 | 1.6 | Mano de Obra 12.000 CLP/HH [16 h]; Materiales y Equipos [1 h] | 828,400 |
|  | 6 | **Protección Contra Incendios** |  | 2026-06-08 | 2026-06-20 |  |  |  |
| 1.10 |  | Planos sistema contra incendio | 12d | 2026-06-08 | 2026-06-20 | 1.7, 1.8, 1.9 | Mano de Obra 12.000 CLP/HH [24 h]; Materiales y Equipos [1 h] | 1,330,800 |
|  | 7 | **Especificaciones Técnicas** |  | 2026-06-05 | 2026-06-22 |  |  |  |
| 1.11 |  | Especificaciones técnicas generales | 15d | 2026-06-05 | 2026-06-20 |  | Mano de Obra 12.000 CLP/HH [30 h]; Materiales y Equipos [1 h] | 1,626,900 |
| 1.12 |  | Especificaciones técnicas estructurales | 15d | 2026-06-05 | 2026-06-20 |  | Mano de Obra 12.000 CLP/HH [35 h]; Materiales y Equipos [1 h] | 1,848,700 |
| 1.13 |  | Especificaciones técnicas EESS | 14d | 2026-06-08 | 2026-06-22 |  | Mano de Obra 12.000 CLP/HH [25 h]; Materiales y Equipos [1 h] | 1,331,100 |
|  | 8 | **Presupuesto y Programación** |  | 2026-06-08 | 2026-06-22 |  |  |  |
| 1.15 |  | Programa oficial del proyecto (P6) | 12d | 2026-06-08 | 2026-06-20 | 1.16 | Mano de Obra 12.000 CLP/HH [45 h]; Materiales y Equipos [1 h] | 2,588,200 |
| 1.14 |  | Presupuesto oficial APU por partida | 12d | 2026-06-10 | 2026-06-22 | 1.15 | Mano de Obra 12.000 CLP/HH [60 h]; Materiales y Equipos [1 h] | 3,327,700 |

| ID | WBS | Activity | Duration | Start | Finish | Predecessors | Resources | Cost |
| --- | --- | --- | --- | --- | --- | --- | --- | --- |
|  | 9 | **Permisos y Tramitaciones** |  | 2026-06-15 | 2026-06-30 |  |  |  |
| 1.16 |  | Solicitud permiso de edificación DOM | 10d | 2026-06-15 | 2026-06-25 | 1.17 | Mano de Obra 12.000 CLP/HH [16 h]; Materiales y Equipos [1 h] | 2,070,600 |
| 1.17 |  | Tramitación revisión SEC instalaciones EE | 13d | 2026-06-15 | 2026-06-28 | 1.18 | Mano de Obra 12.000 CLP/HH [20 h]; Materiales y Equipos [1 h] | 1,109,200 |
| 1.18 |  | Revisión planos SERNAGEOMIN | 15d | 2026-06-15 | 2026-06-30 | 1.16, 1.17 | Mano de Obra 12.000 CLP/HH [16 h]; Materiales y Equipos [1 h] | 887,400 |
| 1.19 |  | Aprobación permiso de edificación | 10d | 2026-06-20 | 2026-06-30 | 1.14 | Mano de Obra 12.000 CLP/HH [8 h]; Materiales y Equipos [1 h] | 591,600 |
|  | 10 | **Planes de Gestión** |  | 2026-06-10 | 2026-06-30 |  |  |  |
| 1.20 |  | Plan de aseguramiento de calidad (PAC) | 12d | 2026-06-10 | 2026-06-22 |  | Mano de Obra 12.000 CLP/HH [24 h]; Materiales y Equipos [1 h] | 1,331,100 |
| 1.21 |  | Plan de gestión ambiental | 12d | 2026-06-10 | 2026-06-22 | 1.20 | Mano de Obra 12.000 CLP/HH [20 h]; Materiales y Equipos [1 h] | 1,109,200 |
| 1.22 |  | Plan de gestión de seguridad (PGS) | 12d | 2026-06-10 | 2026-06-22 | 1.20 | Mano de Obra 12.000 CLP/HH [20 h]; Materiales y Equipos [1 h] | 1,109,200 |
| 1.23 |  | Protocolo de ensayos de materiales | 10d | 2026-06-12 | 2026-06-22 | 1.21 | Mano de Obra 12.000 CLP/HH [12 h]; Materiales y Equipos [1 h] | 665,600 |
| 1.24 |  | Informe de línea base del proyecto | 7d | 2026-06-18 | 2026-06-25 | 1.19 | Mano de Obra 12.000 CLP/HH [16 h]; Materiales y Equipos [1 h] | 887,400 |
| 1.25 |  | Acta de inicio de obra (kick-off) | 2d | 2026-06-28 | 2026-06-30 | 1.24 | Mano de Obra 12.000 CLP/HH [8 h]; Materiales y Equipos [1 h] | 443,700 |
|  | 2 | **FASE 2: OBRAS CIVILES - FUNDACIONES Y LOSA** |  | 2026-06-15 | 2026-08-31 |  |  |  |
|  | 1 | **Instalación de Faenas** |  | 2026-06-15 | 2026-06-22 |  |  |  |
| 2.1 |  | Instalación de faenas (bodega, casino, SSHH) | 7d | 2026-06-15 | 2026-06-22 | 1.19 | Mano de Obra 8.500 CLP/HH [120 h]; Materiales y Equipos [1 h] | 10,842,800 |
| 2.2 |  | Cierre perimetral provisional de obra | 5d | 2026-06-15 | 2026-06-20 | 2.1 | Mano de Obra 8.500 CLP/HH [54 h]; Materiales y Equipos [1 h] | 2,934,000 |
| 2.3 |  | Cartel de obra | 3d | 2026-06-15 | 2026-06-18 | 2.1 | Mano de Obra 8.500 CLP/HH [8 h]; Materiales y Equipos [1 h] | 406,600 |
|  | 2 | **Movimiento de Tierras** |  | 2026-06-18 | 2026-07-05 |  |  |  |
| 2.4 |  | Desbroce y limpieza del terreno | 4d | 2026-06-18 | 2026-06-22 | 2.1 | Mano de Obra 8.500 CLP/HH [110 h]; Materiales y Equipos [1 h] | 1,540,000 |
| 2.5 |  | Topografía y trazado ejes de fundaciones | 2d | 2026-06-20 | 2026-06-22 | 2.4 | Mano de Obra 8.500 CLP/HH [16 h]; Materiales y Equipos [1 h] | 768,000 |
| 2.6 |  | Excavación mecánica para fundaciones | 6d | 2026-06-22 | 2026-06-28 | 2.5 | Mano de Obra 8.500 CLP/HH [52.5 h]; Materiales y Equipos [1 h] | 3,780,000 |
| 2.7 |  | Excavación manual para correcciones | 6d | 2026-06-24 | 2026-06-30 | 2.6 | Mano de Obra 8.500 CLP/HH [120 h] | 1,020,000 |
| 2.8 |  | Retiro de excedentes de excavación | 8d | 2026-06-24 | 2026-07-02 | 2.6 | Mano de Obra 8.500 CLP/HH [32 h]; Materiales y Equipos [1 h] | 2,464,000 |
| 2.9 |  | Relleno y compactación con material seleccionado | 7d | 2026-06-28 | 2026-07-05 | 2.6 | Mano de Obra 8.500 CLP/HH [180 h]; Materiales y Equipos [1 h] | 2,445,000 |

| ID | WBS | Activity | Duration | Start | Finish | Predecessors | Resources | Cost |
| --- | --- | --- | --- | --- | --- | --- | --- | --- |
|  | 3 | **Fundaciones** |  | 2026-06-28 | 2026-07-10 |  |  |  |
| 2.10 |  | Hormigón de limpieza H-10 e=5cm | 4d | 2026-06-28 | 2026-07-02 | 2.6, 2.7 | Mano de Obra 8.500 CLP/HH [98 h]; Materiales y Equipos [1 h] | 2,402,400 |
| 2.11 |  | Enfierradura zapatas (kg) | 8d | 2026-06-28 | 2026-07-06 | 2.10 | Mano de Obra 8.500 CLP/HH [680 h]; Materiales y Equipos [1 h] | 14,450,000 |
| 2.12 |  | Moldaje zapatas aisladas | 7d | 2026-06-28 | 2026-07-04 | 2.10 | Mano de Obra 8.500 CLP/HH [450 h] | 3,825,000 |
| 2.14 |  | Enfierradura cadena de fundación | 8d | 2026-06-30 | 2026-07-08 | 2.10 | Mano de Obra 8.500 CLP/HH [256 h]; Materiales y Equipos [1 h] | 5,440,000 |
| 2.15 |  | Moldaje cadena de fundación | 9d | 2026-06-30 | 2026-07-08 | 2.10 | Mano de Obra 8.500 CLP/HH [800 h] | 6,800,000 |
| 2.17 |  | Pernos de anclaje columnas (set) | 6d | 2026-07-02 | 2026-07-08 | 2.12 | Mano de Obra 8.500 CLP/HH [96 h]; Materiales y Equipos [1 h] | 1,521,600 |
| 2.13 |  | Hormigón H-30 zapatas aisladas | 4d | 2026-07-04 | 2026-07-08 | 2.11, 2.12 | Mano de Obra 8.500 CLP/HH [380 h]; Materiales y Equipos [1 h] | 12,445,000 |
| 2.16 |  | Hormigón H-30 cadena de fundación | 4d | 2026-07-06 | 2026-07-10 | 2.15 | Mano de Obra 8.500 CLP/HH [192 h]; Materiales y Equipos [1 h] | 6,288,000 |
|  | 4 | **Anclajes y Placas Base** |  | 2026-07-10 | 2026-07-18 |  |  |  |
| 2.39 |  | Nivelación y alineación placas base | 4d | 2026-07-10 | 2026-07-14 | 2.17 | Mano de Obra 8.500 CLP/HH [72 h]; Materiales y Equipos [1 h] | 1,953,600 |
| 2.40 |  | Grouting placas base columnas | 4d | 2026-07-14 | 2026-07-18 | 2.39 | Mano de Obra 8.500 CLP/HH [72 h]; Materiales y Equipos [1 h] | 1,646,400 |
|  | 5 | **Radier y Losa** |  | 2026-07-10 | 2026-08-01 |  |  |  |
| 2.19 |  | Relleno interior con ripio compactado e=20cm | 6d | 2026-07-10 | 2026-07-16 | 2.39 | Mano de Obra 8.500 CLP/HH [384 h]; Materiales y Equipos [1 h] | 6,912,000 |
| 2.20 |  | Compactación de subrasante (95% Proctor) | 6d | 2026-07-10 | 2026-07-16 | 2.19 | Mano de Obra 8.500 CLP/HH [100 h]; Materiales y Equipos [1 h] | 2,200,000 |
| 2.21 |  | Sub-base granular e=15cm compactada | 6d | 2026-07-14 | 2026-07-20 |  | Mano de Obra 8.500 CLP/HH [180 h]; Materiales y Equipos [1 h] | 4,890,000 |
| 2.22 |  | Enfierradura losa malla ø8@20cm | 6d | 2026-07-16 | 2026-07-22 | 2.21 | Mano de Obra 8.500 CLP/HH [720 h]; Materiales y Equipos [1 h] | 19,200,000 |
| 2.23 |  | Moldaje perimetral losa | 4d | 2026-07-16 | 2026-07-20 | 2.21 | Mano de Obra 8.500 CLP/HH [180 h]; Materiales y Equipos [1 h] | 3,582,000 |
| 2.24 |  | Instalación tuberías embutidas EESS antes de losa | 4d | 2026-07-16 | 2026-07-20 | 2.22, 2.23, 2.25 | Mano de Obra 8.500 CLP/HH [40 h]; Materiales y Equipos [1 h] | 1,626,500 |
| 2.25 |  | Instalación ductos eléctricos embutidos | 4d | 2026-07-16 | 2026-07-20 | 2.26 | Mano de Obra 8.500 CLP/HH [105 h]; Materiales y Equipos [1 h] | 2,695,000 |
| 2.26 |  | Hormigón H-30 losa e=15cm | 4d | 2026-07-20 | 2026-07-24 |  | Mano de Obra 8.500 CLP/HH [1050 h]; Materiales y Equipos [1 h] | 39,300,000 |
| 2.27 |  | Endurecedor superficial minerálico | 4d | 2026-07-22 | 2026-07-26 |  | Mano de Obra 8.500 CLP/HH [200 h]; Materiales y Equipos [1 h] | 8,200,000 |
| 2.28 |  | Curado de losa con membrana | 4d | 2026-07-24 | 2026-07-28 |  | Mano de Obra 8.500 CLP/HH [100 h]; Materiales y Equipos [1 h] | 2,200,000 |
| 2.29 |  | Corte de juntas de dilatación | 4d | 2026-07-26 | 2026-07-30 | 2.21 | Mano de Obra 8.500 CLP/HH [36 h]; Materiales y Equipos [1 h] | 738,000 |
| 2.30 |  | Sellado de juntas con poliuretano | 4d | 2026-07-28 | 2026-08-01 | 2.24 | Mano de Obra 8.500 CLP/HH [45 h]; Materiales y Equipos [1 h] | 1,062,000 |

| ID | WBS | Activity | Duration | Start | Finish | Predecessors | Resources | Cost |
| --- | --- | --- | --- | --- | --- | --- | --- | --- |
|  | 6 | **Pavimentos y Obras Exteriores** |  | 2026-07-20 | 2026-08-01 |  |  |  |
| 2.31 |  | Pavimento exterior acceso hormigón H-25 e=12cm | 10d | 2026-07-20 | 2026-07-30 | 2.26 | Mano de Obra 8.500 CLP/HH [400 h]; Materiales y Equipos [1 h] | 5,060,000 |
| 2.32 |  | Bordillo hormigón prefabricado | 6d | 2026-07-24 | 2026-07-30 | 2.26 | Mano de Obra 8.500 CLP/HH [64 h]; Materiales y Equipos [1 h] | 1,304,000 |
| 2.33 |  | Veredas peatonales H-25 | 8d | 2026-07-24 | 2026-08-01 | 2.26 | Mano de Obra 8.500 CLP/HH [120 h]; Materiales y Equipos [1 h] | 1,356,000 |
| 2.41 |  | Hormigón cierre perimetral inferior (soleo) | 6d | 2026-07-26 | 2026-08-01 | 2.26 | Mano de Obra 8.500 CLP/HH [270 h]; Materiales y Equipos [1 h] | 3,582,000 |
|  | 7 | **Obras de Drenaje** |  | 2026-07-10 | 2026-08-27 |  |  |  |
| 2.34 |  | Foso de inspección instalaciones | 6d | 2026-07-10 | 2026-07-16 | 2.19 | Mano de Obra 8.500 CLP/HH [48 h]; Materiales y Equipos [1 h] | 1,536,000 |
| 2.35 |  | Cámara de inspección aguas lluvia | 6d | 2026-07-14 | 2026-07-20 | 2.34 | Mano de Obra 8.500 CLP/HH [48 h]; Materiales y Equipos [1 h] | 1,761,900 |
| 2.37 |  | Red de alcantarillado pluvial enterrada | 8d | 2026-07-14 | 2026-07-22 | 2.35 | Mano de Obra 8.500 CLP/HH [80 h]; Materiales y Equipos [1 h] | 2,536,000 |
| 2.36 |  | Canaleta aguas lluvia perimetral | 8d | 2026-07-16 | 2026-07-24 | 2.34 | Mano de Obra 8.500 CLP/HH [80 h]; Materiales y Equipos [1 h] | 4,048,000 |
| 2.38 |  | Colector de agua lluvia (bajadas techo) | 8d | 2026-08-19 | 2026-08-27 | 3.25 | Mano de Obra 8.500 CLP/HH [24 h]; Materiales y Equipos [1 h] | 614,400 |
|  | 8 | **Terminaciones de Piso** |  | 2026-08-19 | 2026-08-31 |  |  |  |
| 2.42 |  | Pintura suelo epóxico 2 manos demarcación | 10d | 2026-08-19 | 2026-08-29 | 2.30 | Mano de Obra 8.500 CLP/HH [400 h]; Materiales y Equipos [1 h] | 15,400,000 |
| 2.43 |  | Demarcación zonas de tránsito y almacén | 7d | 2026-08-24 | 2026-08-31 | 2.42 | Mano de Obra 8.500 CLP/HH [60 h]; Materiales y Equipos [1 h] | 2,360,000 |
|  | 9 | **Ensayos y Control de Calidad** |  | 2026-07-04 | 2026-08-29 |  |  |  |
| 2.44 |  | Ensayo compresión hormigón (serie 3 probetas) | 56d | 2026-07-04 | 2026-08-29 | 2.14 | Mano de Obra 8.500 CLP/HH [30 h]; Materiales y Equipos [1 h] | 1,152,000 |
| 2.45 |  | Ensayo compactación Proctor modificado | 6d | 2026-07-14 | 2026-07-20 | 2.20 | Mano de Obra 8.500 CLP/HH [16 h]; Materiales y Equipos [1 h] | 343,200 |
|  | 3 | **FASE 3: ESTRUCTURA METÁLICA Y CUBIERTA** |  | 2026-07-10 | 2026-09-02 |  |  |  |
|  | 1 | **Fabricación Estructura Metálica** |  | 2026-07-10 | 2026-08-03 |  |  |  |
| 3.1 |  | Fabricación columnas perfil HEB 260 | 18d | 2026-07-10 | 2026-07-28 | 1.7, 2.40 | Mano de Obra 10.000 CLP/HH [768 h]; Materiales y Equipos [1 h] | 44,016,000 |
| 3.2 |  | Fabricación vigas principales reticuladas | 20d | 2026-07-10 | 2026-07-30 | 3.1 | Mano de Obra 10.000 CLP/HH [960 h]; Materiales y Equipos [1 h] | 39,736,800 |
| 3.3 |  | Fabricación vigas secundarias IPE 240 | 18d | 2026-07-14 | 2026-08-01 | 3.2 | Mano de Obra 10.000 CLP/HH [720 h]; Materiales y Equipos [1 h] | 25,980,000 |
| 3.4 |  | Fabricación viguetas de cubierta | 20d | 2026-07-14 | 2026-08-03 | 3.3 | Mano de Obra 10.000 CLP/HH [720 h]; Materiales y Equipos [1 h] | 17,124,000 |
| 3.5 |  | Fabricación correas de techo C200 | 18d | 2026-07-16 | 2026-08-03 | 3.4 | Mano de Obra 10.000 CLP/HH [400 h]; Materiales y Equipos [1 h] | 9,680,000 |
| 3.6 |  | Fabricación tirantes y cruces de San Andrés | 16d | 2026-07-18 | 2026-08-03 | 3.5 | Mano de Obra 10.000 CLP/HH [250 h]; Materiales y Equipos [1 h] | 3,250,000 |

| ID | WBS | Activity | Duration | Start | Finish | Predecessors | Resources | Cost |
| --- | --- | --- | --- | --- | --- | --- | --- | --- |
|  | 2 | **Fabricación Portones y Accesos** |  | 2026-07-20 | 2026-08-07 |  |  |  |
| 3.7 |  | Fabricación portones ingreso 5x6m | 18d | 2026-07-20 | 2026-08-07 | 3.4 | Mano de Obra 10.000 CLP/HH [240 h]; Materiales y Equipos [1 h] | 8,660,400 |
| 3.8 |  | Fabricación portón salida emergencia 3x4m | 18d | 2026-07-20 | 2026-08-07 | 3.7 | Mano de Obra 10.000 CLP/HH [160 h]; Materiales y Equipos [1 h] | 4,890,600 |
|  | 3 | **Fabricación Plataformas y Escaleras** |  | 2026-07-24 | 2026-08-09 |  |  |  |
| 3.10 |  | Fabricación escaleras metálicas interiores | 16d | 2026-07-24 | 2026-08-09 |  | Mano de Obra 10.000 CLP/HH [80 h]; Materiales y Equipos [1 h] | 1,834,000 |
| 3.9 |  | Fabricación plataformas de acceso acero | 16d | 2026-07-24 | 2026-08-09 |  | Mano de Obra 10.000 CLP/HH [320 h]; Materiales y Equipos [1 h] | 5,708,000 |
|  | 4 | **Tratamiento Anticorrosivo y Pintura** |  | 2026-07-20 | 2026-08-15 |  |  |  |
| 3.11 |  | Granallado y pintura anticorrosiva 2 manos | 22d | 2026-07-20 | 2026-08-11 | 3.1, 3.2, 3.3 | Mano de Obra 10.000 CLP/HH [680 h]; Materiales y Equipos [1 h] | 34,000,000 |
| 3.12 |  | Pintura esmalte color final RAL 7035 | 8d | 2026-08-07 | 2026-08-15 | 3.11 | Mano de Obra 10.000 CLP/HH [340 h]; Materiales y Equipos [1 h] | 17,000,000 |
|  | 5 | **Logística y Transporte** |  | 2026-08-11 | 2026-08-23 |  |  |  |
| 3.13 |  | Transporte de estructura a obra | 4d | 2026-08-11 | 2026-08-15 | 3.12 | Mano de Obra 10.000 CLP/HH [16 h]; Materiales y Equipos [1 h] | 4,330,200 |
| 3.44 |  | Habilitación acceso maquinaria pesada a galpón | 4d | 2026-08-19 | 2026-08-23 | 3.13 | Mano de Obra 8.500 CLP/HH [24 h]; Materiales y Equipos [1 h] | 1,783,000 |
|  | 6 | **Montaje Estructura Principal** |  | 2026-07-30 | 2026-08-21 |  |  |  |
| 3.14 |  | Montaje columnas principales | 12d | 2026-07-30 | 2026-08-11 | 2.40, 3.13 | Mano de Obra 10.000 CLP/HH [192 h]; Materiales y Equipos [1 h] | 4,401,600 |
| 3.15 |  | Montaje vigas principales | 10d | 2026-08-03 | 2026-08-13 | 3.14 | Mano de Obra 10.000 CLP/HH [96 h]; Materiales y Equipos [1 h] | 2,139,600 |
| 3.16 |  | Montaje vigas secundarias | 10d | 2026-08-05 | 2026-08-15 | 3.15 | Mano de Obra 10.000 CLP/HH [240 h]; Materiales y Equipos [1 h] | 2,904,000 |
| 3.17 |  | Montaje viguetas de cubierta | 10d | 2026-08-07 | 2026-08-17 | 3.16 | Mano de Obra 10.000 CLP/HH [240 h]; Materiales y Equipos [1 h] | 2,748,000 |
| 3.18 |  | Montaje correas de techo | 10d | 2026-08-09 | 2026-08-19 | 3.17 | Mano de Obra 10.000 CLP/HH [200 h]; Materiales y Equipos [1 h] | 2,540,000 |
| 3.19 |  | Montaje tirantes y arriostramiento | 10d | 2026-08-11 | 2026-08-21 | 3.18 | Mano de Obra 10.000 CLP/HH [100 h] | 1,000,000 |
|  | 7 | **Montaje Portones y Accesos** |  | 2026-08-19 | 2026-08-25 |  |  |  |
| 3.20 |  | Montaje portones de acceso vehicular | 6d | 2026-08-19 | 2026-08-25 | 3.18 | Mano de Obra 10.000 CLP/HH [32 h]; Materiales y Equipos [1 h] | 866,000 |
| 3.21 |  | Montaje puertas de emergencia | 6d | 2026-08-19 | 2026-08-25 | 3.20 | Mano de Obra 10.000 CLP/HH [24 h]; Materiales y Equipos [1 h] | 662,200 |
|  | 8 | **Montaje Plataformas y Escaleras** |  | 2026-08-17 | 2026-08-25 |  |  |  |
| 3.22 |  | Montaje plataformas y escaleras | 8d | 2026-08-17 | 2026-08-25 | 3.17, 3.21 | Mano de Obra 10.000 CLP/HH [48 h]; Materiales y Equipos [1 h] | 1,222,600 |

| ID | WBS | Activity | Duration | Start | Finish | Predecessors | Resources | Cost |
| --- | --- | --- | --- | --- | --- | --- | --- | --- |
|  | 9 | **Cubierta y Cerramientos** |  | 2026-08-15 | 2026-08-29 |  |  |  |
| 3.25 |  | Cubierta panel sandwich TR-5 e=50mm | 10d | 2026-08-15 | 2026-08-25 | 3.18 | Mano de Obra 10.000 CLP/HH [840 h]; Materiales y Equipos [1 h] | 40,530,000 |
| 3.26 |  | Cierre lateral panel metálico e=40mm | 10d | 2026-08-17 | 2026-08-27 | 3.25 | Mano de Obra 10.000 CLP/HH [630 h]; Materiales y Equipos [1 h] | 29,340,000 |
| 3.27 |  | Frente fachada con panel metálico | 10d | 2026-08-17 | 2026-08-27 | 3.25 | Mano de Obra 10.000 CLP/HH [128 h]; Materiales y Equipos [1 h] | 5,728,000 |
| 3.30 |  | Instalación claraboyas translúcidas | 8d | 2026-08-19 | 2026-08-27 | 3.25 | Mano de Obra 10.000 CLP/HH [100 h]; Materiales y Equipos [1 h] | 4,580,000 |
| 3.31 |  | Instalación rejillas de ventilación cenital | 8d | 2026-08-19 | 2026-08-27 | 3.25 | Mano de Obra 10.000 CLP/HH [48 h]; Materiales y Equipos [1 h] | 1,467,200 |
| 3.28 |  | Instalación canaletas y bajadas de aguas lluvia | 8d | 2026-08-21 | 2026-08-29 | 3.26 | Mano de Obra 10.000 CLP/HH [48 h]; Materiales y Equipos [1 h] | 1,472,000 |
| 3.29 |  | Instalación cumbreras y remates perimetrales | 8d | 2026-08-21 | 2026-08-29 | 3.26 | Mano de Obra 10.000 CLP/HH [40 h]; Materiales y Equipos [1 h] | 1,220,000 |
| 3.32 |  | Sellado de encuentros cubierta-muro | 6d | 2026-08-23 | 2026-08-29 | 3.27 | Mano de Obra 10.000 CLP/HH [60 h]; Materiales y Equipos [1 h] | 920,000 |
|  | 10 | **Aislaciones** |  | 2026-08-15 | 2026-08-29 |  |  |  |
| 3.33 |  | Barrera de vapor bajo cubierta | 8d | 2026-08-15 | 2026-08-23 | 3.25 | Mano de Obra 10.000 CLP/HH [210 h]; Materiales y Equipos [1 h] | 3,780,000 |
| 3.34 |  | Aislación térmica cubierta lana mineral e=80mm | 8d | 2026-08-17 | 2026-08-25 | 3.25 | Mano de Obra 10.000 CLP/HH [420 h]; Materiales y Equipos [1 h] | 9,030,000 |
| 3.35 |  | Aislación muros laterales e=50mm | 8d | 2026-08-19 | 2026-08-27 | 3.26 | Mano de Obra 10.000 CLP/HH [270 h]; Materiales y Equipos [1 h] | 5,940,000 |
| 3.36 |  | Cierre inferior muro con placa fibrocemento | 6d | 2026-08-23 | 2026-08-29 | 3.35 | Mano de Obra 10.000 CLP/HH [90 h]; Materiales y Equipos [1 h] | 2,016,000 |
|  | 11 | **Ventanas y Vanos** |  | 2026-08-21 | 2026-08-27 |  |  |  |
| 3.37 |  | Instalación ventanas fachada (0.8x1.0m) | 6d | 2026-08-21 | 2026-08-27 | 3.26 | Mano de Obra 10.000 CLP/HH [36 h]; Materiales y Equipos [1 h] | 1,130,400 |
| 3.38 |  | Instalación ventanas laterales (0.6x0.8m) | 6d | 2026-08-21 | 2026-08-27 | 3.26 | Mano de Obra 10.000 CLP/HH [40 h]; Materiales y Equipos [1 h] | 1,478,000 |
|  | 12 | **Pinturas y Terminaciones** |  | 2026-08-25 | 2026-08-31 |  |  |  |
| 3.39 |  | Pintura exterior de fachadas | 6d | 2026-08-25 | 2026-08-31 | 3.25, 3.26 | Mano de Obra 10.000 CLP/HH [318 h]; Materiales y Equipos [1 h] | 5,936,000 |
| 3.40 |  | Pintura interior galpón (vigas y columnas) | 6d | 2026-08-25 | 2026-08-31 | 3.39 | Mano de Obra 10.000 CLP/HH [144 h]; Materiales y Equipos [1 h] | 2,760,000 |
| 3.45 |  | Limpieza post montaje estructura | 4d | 2026-08-27 | 2026-08-31 | 3.39 | Mano de Obra 10.000 CLP/HH [8 h]; Materiales y Equipos [1 h] | 611,300 |
|  | 13 | **Control Calidad Estructura** |  | 2026-08-15 | 2026-08-29 |  |  |  |
| 3.24 |  | Inspección radiográfica soldaduras críticas | 8d | 2026-08-15 | 2026-08-23 | 3.19 | Mano de Obra 10.000 CLP/HH [80 h]; Materiales y Equipos [1 h] | 917,000 |
| 3.23 |  | Apriete y revisión pernos de alta resistencia | 6d | 2026-08-17 | 2026-08-23 | 3.18 | Mano de Obra 10.000 CLP/HH [48 h]; Materiales y Equipos [1 h] | 1,426,500 |
| 3.43 |  | Control dimensional post montaje | 4d | 2026-08-23 | 2026-08-27 | 3.41 | Mano de Obra 10.000 CLP/HH [16 h]; Materiales y Equipos [1 h] | 764,100 |
| 3.41 |  | Prueba de carga estructura (1.5x sobrecarga) | 4d | 2026-08-25 | 2026-08-29 | 3.23, 3.24 | Mano de Obra 10.000 CLP/HH [24 h]; Materiales y Equipos [1 h] | 1,783,000 |

| ID | WBS | Activity | Duration | Start | Finish | Predecessors | Resources | Cost |
| --- | --- | --- | --- | --- | --- | --- | --- | --- |
|  | 14 | **Documentación As-Built** |  | 2026-08-27 | 2026-09-02 |  |  |  |
| 3.42 |  | Entrega de planos as-built estructura | 6d | 2026-08-27 | 2026-09-02 | 3.43 | Mano de Obra 12.000 CLP/HH [8 h]; Materiales y Equipos [1 h] | 433,000 |
|  | 4 | **FASE 4: INSTALACIONES (EE + SS + CI + VENT)** |  | 2026-07-25 | 2026-09-13 |  |  |  |
|  | 1 | **Instalaciones Eléctricas - Tableros** |  | 2026-07-25 | 2026-08-07 |  |  |  |
| 4.1 |  | Tablero general BT 400A con protecciones | 10d | 2026-07-25 | 2026-08-04 | 2.25, 3.14 | Mano de Obra 9.500 CLP/HH [32 h]; Materiales y Equipos [1 h] | 11,769,300 |
| 4.2 |  | Tablero de alumbrado y tomacorrientes | 10d | 2026-07-28 | 2026-08-07 | 2.25 | Mano de Obra 9.500 CLP/HH [48 h]; Materiales y Equipos [1 h] | 7,477,200 |
| 4.3 |  | Tablero de fuerza motores | 10d | 2026-07-28 | 2026-08-07 | 2.25 | Mano de Obra 9.500 CLP/HH [24 h]; Materiales y Equipos [1 h] | 3,461,500 |
|  | 2 | **Instalaciones Eléctricas - Canalizaciones** |  | 2026-07-30 | 2026-08-15 |  |  |  |
| 4.4 |  | Canalización conduit EMT 3" para circuito principal | 10d | 2026-07-30 | 2026-08-09 | 4.1 | Mano de Obra 9.500 CLP/HH [40 h]; Materiales y Equipos [1 h] | 2,440,000 |
| 4.5 |  | Canalización conduit EMT 1" alumbrado | 14d | 2026-08-01 | 2026-08-15 | 4.1 | Mano de Obra 9.500 CLP/HH [120 h]; Materiales y Equipos [1 h] | 7,080,000 |
| 4.6 |  | Canalización conduit EMT 1/2" tomacorrientes | 14d | 2026-08-01 | 2026-08-15 | 4.1 | Mano de Obra 9.500 CLP/HH [60 h]; Materiales y Equipos [1 h] | 3,600,000 |
|  | 3 | **Instalaciones Eléctricas - Cableado** |  | 2026-07-30 | 2026-08-19 |  |  |  |
| 4.7 |  | Cable poder 4x16mm2 (alimentador principal) | 10d | 2026-07-30 | 2026-08-09 | 4.4 | Mano de Obra 9.500 CLP/HH [30 h]; Materiales y Equipos [1 h] | 2,500,000 |
| 4.8 |  | Cable XLPE 4x6mm2 circuitos secundarios | 14d | 2026-08-03 | 2026-08-17 | 4.5 | Mano de Obra 9.500 CLP/HH [120 h]; Materiales y Equipos [1 h] | 9,440,000 |
| 4.9 |  | Cable XLPE 3x2.5mm2 alumbrado | 15d | 2026-08-04 | 2026-08-19 | 4.6 | Mano de Obra 9.500 CLP/HH [120 h]; Materiales y Equipos [1 h] | 5,760,000 |
|  | 4 | **Instalaciones Eléctricas - Iluminación** |  | 2026-08-11 | 2026-08-21 |  |  |  |
| 4.10 |  | Luminaria LED industrial highbay 200W UFO | 10d | 2026-08-11 | 2026-08-21 | 4.7 | Mano de Obra 9.500 CLP/HH [80 h]; Materiales y Equipos [1 h] | 10,244,000 |
| 4.11 |  | Luminaria LED fluorescente 2x36W oficinas | 10d | 2026-08-11 | 2026-08-21 | 4.10 | Mano de Obra 9.500 CLP/HH [12 h]; Materiales y Equipos [1 h] | 720,800 |
| 4.12 |  | Luminaria exterior LED 150W con poste | 10d | 2026-08-11 | 2026-08-21 | 4.10 | Mano de Obra 9.500 CLP/HH [18 h]; Materiales y Equipos [1 h] | 2,658,600 |
|  | 5 | **Instalaciones Eléctricas - Accesorios** |  | 2026-08-07 | 2026-08-19 |  |  |  |
| 4.13 |  | Interruptores, tomacorrientes y accesorios | 12d | 2026-08-07 | 2026-08-19 | 4.8, 4.9 | Mano de Obra 9.500 CLP/HH [24 h]; Materiales y Equipos [1 h] | 3,877,000 |
|  | 6 | **Instalaciones Eléctricas - Puesta a Tierra** |  | 2026-07-30 | 2026-08-15 |  |  |  |
| 4.14 |  | Sistema de puesta a tierra (red malla) | 12d | 2026-07-30 | 2026-08-11 | 4.7 | Mano de Obra 9.500 CLP/HH [40 h]; Materiales y Equipos [1 h] | 4,846,100 |
| 4.15 |  | Medición de resistencia de tierra (<5Ohm) | 4d | 2026-08-11 | 2026-08-15 | 4.14 | Mano de Obra 9.500 CLP/HH [4 h]; Materiales y Equipos [1 h] | 484,700 |

| ID | WBS | Activity | Duration | Start | Finish | Predecessors | Resources | Cost |
| --- | --- | --- | --- | --- | --- | --- | --- | --- |
|  | 7 | **Instalaciones Eléctricas - Respaldo** |  | 2026-08-14 | 2026-08-29 |  |  |  |
| 4.16 |  | Sistema UPS oficina administración 3KVA | 7d | 2026-08-14 | 2026-08-21 | 4.15 | Mano de Obra 9.500 CLP/HH [8 h]; Materiales y Equipos [1 h] | 1,661,500 |
| 4.18 |  | Generador de emergencia 50KVA (arriendo) | 10d | 2026-08-19 | 2026-08-29 | 4.16 | Mano de Obra 9.500 CLP/HH [8 h]; Materiales y Equipos [1 h] | 3,877,000 |
|  | 8 | **Instalaciones Eléctricas - Recepción SEC** |  | 2026-08-24 | 2026-09-03 |  |  |  |
| 4.17 |  | Revisión SEC y emisión informe | 10d | 2026-08-24 | 2026-09-03 | 4.18, 4.9 | Mano de Obra 9.500 CLP/HH [16 h]; Materiales y Equipos [1 h] | 1,176,900 |
|  | 9 | **Instalaciones Sanitarias - Agua Potable** |  | 2026-07-26 | 2026-08-11 |  |  |  |
| 4.19 |  | Red AP enterrada PVC PN10 ø63mm | 10d | 2026-07-26 | 2026-08-05 | 2.24 | Mano de Obra 9.500 CLP/HH [30 h]; Materiales y Equipos [1 h] | 1,500,000 |
| 4.20 |  | Red AP interior PVC PN10 ø25mm | 10d | 2026-08-01 | 2026-08-11 | 4.19 | Mano de Obra 9.500 CLP/HH [12 h]; Materiales y Equipos [1 h] | 472,000 |
|  | 10 | **Instalaciones Sanitarias - Artefactos** |  | 2026-08-14 | 2026-08-24 |  |  |  |
| 4.21 |  | Artefactos sanitarios (WC+lavamanos+urinario) | 10d | 2026-08-14 | 2026-08-24 | 4.20 | Mano de Obra 9.500 CLP/HH [32 h]; Materiales y Equipos [1 h] | 3,877,000 |
| 4.22 |  | Instalación duchas SSHH personal | 10d | 2026-08-14 | 2026-08-24 | 4.21 | Mano de Obra 9.500 CLP/HH [24 h]; Materiales y Equipos [1 h] | 2,104,800 |
|  | 11 | **Instalaciones Sanitarias - Alcantarillado** |  | 2026-07-26 | 2026-08-09 |  |  |  |
| 4.24 |  | Red alcantarillado exterior PVC ø160mm | 10d | 2026-07-26 | 2026-08-05 | 2.24 | Mano de Obra 9.500 CLP/HH [48 h]; Materiales y Equipos [1 h] | 2,328,000 |
| 4.23 |  | Red alcantarillado interior PVC ø110mm | 12d | 2026-07-28 | 2026-08-09 | 2.24 | Mano de Obra 9.500 CLP/HH [48 h]; Materiales y Equipos [1 h] | 2,440,000 |
| 4.25 |  | Cámara de inspección aguas servidas | 8d | 2026-07-28 | 2026-08-05 | 2.24 | Mano de Obra 9.500 CLP/HH [32 h]; Materiales y Equipos [1 h] | 1,329,200 |
| 4.26 |  | Trampa de grasas | 8d | 2026-07-28 | 2026-08-05 | 2.24 | Mano de Obra 9.500 CLP/HH [8 h]; Materiales y Equipos [1 h] | 1,176,900 |
|  | 12 | **Instalaciones Sanitarias - Gas** |  | 2026-08-15 | 2026-08-21 |  |  |  |
| 4.27 |  | Instalación calefón 10L gas licuado | 6d | 2026-08-15 | 2026-08-21 | 4.24 | Mano de Obra 9.500 CLP/HH [6 h]; Materiales y Equipos [1 h] | 664,600 |
|  | 13 | **Construcción SSHH** |  | 2026-07-30 | 2026-08-17 |  |  |  |
| 4.28 |  | Construcción SSHH + caseta prefabricada 15m2 | 18d | 2026-07-30 | 2026-08-17 | 2.1 | Mano de Obra 9.500 CLP/HH [120 h]; Materiales y Equipos [1 h] | 7,893,000 |
|  | 14 | **Protección Contra Incendios - Red Húmeda** |  | 2026-08-01 | 2026-08-21 |  |  |  |
| 4.29 |  | Red húmeda rociadores NFPA-13 ø63mm | 16d | 2026-08-01 | 2026-08-17 | 2.24, 4.28 | Mano de Obra 9.500 CLP/HH [320 h]; Materiales y Equipos [1 h] | 19,400,000 |
| 4.30 |  | Rociadores automáticos estándar 68°C | 10d | 2026-08-11 | 2026-08-21 | 4.29 | Mano de Obra 9.500 CLP/HH [80 h]; Materiales y Equipos [1 h] | 4,208,000 |
|  | 15 | **Protección Contra Incendios - Detección** |  | 2026-08-11 | 2026-08-21 |  |  |  |
| 4.31 |  | Central de detección incendio 8 zonas | 8d | 2026-08-11 | 2026-08-19 | 4.30 | Mano de Obra 9.500 CLP/HH [16 h]; Materiales y Equipos [1 h] | 3,877,000 |
| 4.32 |  | Detectores de humo fotoeléctricos | 8d | 2026-08-13 | 2026-08-21 | 4.31 | Mano de Obra 9.500 CLP/HH [20 h]; Materiales y Equipos [1 h] | 1,052,000 |
| 4.33 |  | Detectores temperatura 58°C | 8d | 2026-08-13 | 2026-08-21 | 4.31 | Mano de Obra 9.500 CLP/HH [12 h]; Materiales y Equipos [1 h] | 531,600 |
| 4.34 |  | Pulsadores manuales de alarma | 8d | 2026-08-13 | 2026-08-21 | 4.31 | Mano de Obra 9.500 CLP/HH [3 h]; Materiales y Equipos [1 h] | 232,800 |
| 4.35 |  | Sirenas estroboscópicas de alarma | 8d | 2026-08-13 | 2026-08-21 | 4.31 | Mano de Obra 9.500 CLP/HH [3 h]; Materiales y Equipos [1 h] | 540,600 |

| ID | WBS | Activity | Duration | Start | Finish | Predecessors | Resources | Cost |
| --- | --- | --- | --- | --- | --- | --- | --- | --- |
|  | 16 | **Protección Contra Incendios - Equipos** |  | 2026-07-30 | 2026-08-29 |  |  |  |
| 4.38 |  | Estanque de reserva agua CI 20m3 | 12d | 2026-07-30 | 2026-08-11 | 4.29 | Mano de Obra 9.500 CLP/HH [24 h]; Materiales y Equipos [1 h] | 6,230,800 |
| 4.39 |  | Grupo de presión CI motor-bomba 30HP | 12d | 2026-08-07 | 2026-08-19 | 4.38 | Mano de Obra 9.500 CLP/HH [16 h]; Materiales y Equipos [1 h] | 9,000,000 |
| 4.36 |  | Gabinetes contra incendio 1.5" completos | 8d | 2026-08-15 | 2026-08-23 | 4.29 | Mano de Obra 9.500 CLP/HH [16 h]; Materiales y Equipos [1 h] | 2,104,800 |
| 4.37 |  | Extintores PQS 12kg ABC | 5d | 2026-08-24 | 2026-08-29 | 4.36 | Mano de Obra 9.500 CLP/HH [10 h]; Materiales y Equipos [1 h] | 1,052,000 |
|  | 17 | **Protección Contra Incendios - Pruebas** |  | 2026-08-23 | 2026-08-27 |  |  |  |
| 4.40 |  | Prueba hidráulica red CI (1.5x presión trabajo) | 4d | 2026-08-23 | 2026-08-27 | 4.29, 4.35, 4.36 | Mano de Obra 9.500 CLP/HH [8 h]; Materiales y Equipos [1 h] | 2,492,400 |
|  | 18 | **Ventilación y Extracción** |  | 2026-08-13 | 2026-08-27 |  |  |  |
| 4.43 |  | Ductos metálicos galvanizados ventilación | 10d | 2026-08-13 | 2026-08-23 | 3.26 | Mano de Obra 9.500 CLP/HH [120 h]; Materiales y Equipos [1 h] | 5,316,000 |
| 4.44 |  | Rejillas de admisión aire fresco fachada | 10d | 2026-08-13 | 2026-08-23 | 3.26 | Mano de Obra 9.500 CLP/HH [12 h]; Materiales y Equipos [1 h] | 1,081,200 |
| 4.41 |  | Extractor industrial axial 15.000m3/h | 10d | 2026-08-15 | 2026-08-25 | 3.26 | Mano de Obra 9.500 CLP/HH [48 h]; Materiales y Equipos [1 h] | 14,954,400 |
| 4.42 |  | Ventiladores de inyección 8.000m3/h | 10d | 2026-08-15 | 2026-08-25 | 3.26 | Mano de Obra 9.500 CLP/HH [24 h]; Materiales y Equipos [1 h] | 6,646,000 |
| 4.46 |  | Sistema extracción gases batería carga montacarga | 8d | 2026-08-19 | 2026-08-27 | 3.26 | Mano de Obra 9.500 CLP/HH [16 h]; Materiales y Equipos [1 h] | 4,846,100 |
| 4.45 |  | Control automático ventilación (termostato) | 6d | 2026-08-21 | 2026-08-27 | 4.41 | Mano de Obra 9.500 CLP/HH [8 h]; Materiales y Equipos [1 h] | 1,176,900 |
|  | 19 | **Pruebas y Comisionamiento** |  | 2026-08-27 | 2026-09-03 |  |  |  |
| 4.47 |  | Pruebas y comisionamiento instalaciones EE | 7d | 2026-08-27 | 2026-09-03 | 4.9, 4.21, 4.22 | Mano de Obra 9.500 CLP/HH [24 h]; Materiales y Equipos [1 h] | 3,877,000 |
| 4.48 |  | Pruebas y comisionamiento SSHH | 4d | 2026-08-27 | 2026-08-31 | 4.23, 4.24 | Mano de Obra 9.500 CLP/HH [16 h]; Materiales y Equipos [1 h] | 2,076,900 |
|  | 20 | **Documentación As-Built** |  | 2026-09-03 | 2026-09-13 |  |  |  |
| 4.49 |  | Planos as-built instalaciones | 7d | 2026-09-03 | 2026-09-10 | 4.47 | Mano de Obra 12.000 CLP/HH [8 h]; Materiales y Equipos [1 h] | 1,315,300 |
| 4.50 |  | Informe final de instalaciones y ensayos | 7d | 2026-09-06 | 2026-09-13 | 4.49 | Mano de Obra 12.000 CLP/HH [8 h]; Materiales y Equipos [1 h] | 1,176,900 |
|  | 5 | **FASE 5: EQUIPAMIENTO INTERIOR Y TERMINACIONES** |  | 2026-08-27 | 2026-09-23 |  |  |  |
|  | 1 | **Equipamiento de Almacenamiento** |  | 2026-08-27 | 2026-09-10 |  |  |  |
| 5.1 |  | Estantería metálica pesada 5 niveles 1000kg/niv | 12d | 2026-08-27 | 2026-09-08 | 4.47, 4.48 | Mano de Obra 8.500 CLP/HH [240 h]; Materiales y Equipos [1 h] | 65,688,000 |
| 5.2 |  | Estantería metálica mediana 3 niveles 500kg/niv | 12d | 2026-08-27 | 2026-09-08 | 5.1 | Mano de Obra 8.500 CLP/HH [120 h]; Materiales y Equipos [1 h] | 34,896,000 |
| 5.3 |  | Estantería para neumáticos y partes largas | 12d | 2026-08-29 | 2026-09-10 |  | Mano de Obra 8.500 CLP/HH [40 h]; Materiales y Equipos [1 h] | 13,000,000 |

| ID | WBS | Activity | Duration | Start | Finish | Predecessors | Resources | Cost |
| --- | --- | --- | --- | --- | --- | --- | --- | --- |
|  | 2 | **Mobiliario Industrial** |  | 2026-08-29 | 2026-09-08 |  |  |  |
| 5.4 |  | Mesones metálicos de trabajo 200x80cm | 10d | 2026-08-29 | 2026-09-08 | 5.3 | Mano de Obra 8.500 CLP/HH [18 h]; Materiales y Equipos [1 h] | 2,299,200 |
| 5.5 |  | Casilleros personal (4 puertas) | 10d | 2026-08-29 | 2026-09-08 | 5.4 | Mano de Obra 8.500 CLP/HH [8 h]; Materiales y Equipos [1 h] | 1,751,600 |
|  | 3 | **Señalética** |  | 2026-08-31 | 2026-09-13 |  |  |  |
| 5.9 |  | Pintura de señalética piso (vías tránsito) | 8d | 2026-08-31 | 2026-09-08 | 2.43 | Mano de Obra 8.500 CLP/HH [45 h]; Materiales y Equipos [1 h] | 1,740,000 |
| 5.6 |  | Señalética de seguridad vinilo reflectante | 10d | 2026-09-03 | 2026-09-13 | 2.43 | Mano de Obra 8.500 CLP/HH [18 h]; Materiales y Equipos [1 h] | 1,230,000 |
| 5.7 |  | Señalética de almacenamiento y zonas | 10d | 2026-09-03 | 2026-09-13 | 5.6 | Mano de Obra 8.500 CLP/HH [10 h]; Materiales y Equipos [1 h] | 656,000 |
| 5.8 |  | Señalética de emergencia y evacuación | 10d | 2026-09-03 | 2026-09-13 | 5.6 | Mano de Obra 8.500 CLP/HH [6 h]; Materiales y Equipos [1 h] | 494,000 |
|  | 4 | **Sistemas de Seguridad y CCTV** |  | 2026-09-03 | 2026-09-14 |  |  |  |
| 5.10 |  | Cámaras CCTV domo 4K interior | 10d | 2026-09-03 | 2026-09-13 | 5.9 | Mano de Obra 8.500 CLP/HH [24 h]; Materiales y Equipos [1 h] | 3,065,600 |
| 5.11 |  | Cámaras CCTV exterior PTZ 4K | 10d | 2026-09-03 | 2026-09-13 | 5.10 | Mano de Obra 8.500 CLP/HH [16 h]; Materiales y Equipos [1 h] | 2,463,200 |
| 5.12 |  | DVR 16 canales 4K + disco 8TB | 7d | 2026-09-06 | 2026-09-13 | 5.11 | Mano de Obra 8.500 CLP/HH [4 h]; Materiales y Equipos [1 h] | 2,463,300 |
| 5.13 |  | Monitor 55" sala de control | 6d | 2026-09-08 | 2026-09-14 | 5.12 | Mano de Obra 8.500 CLP/HH [2 h]; Materiales y Equipos [1 h] | 656,900 |
|  | 5 | **Sistemas de Control de Acceso** |  | 2026-09-06 | 2026-09-16 |  |  |  |
| 5.14 |  | Sistema control de acceso biométrico | 10d | 2026-09-06 | 2026-09-16 | 5.13 | Mano de Obra 8.500 CLP/HH [24 h]; Materiales y Equipos [1 h] | 3,489,600 |
| 5.15 |  | Torniquete de acceso peatonal | 8d | 2026-09-08 | 2026-09-16 | 5.14 | Mano de Obra 8.500 CLP/HH [8 h]; Materiales y Equipos [1 h] | 2,463,300 |
| 5.16 |  | Barrera vehicular automática | 8d | 2026-09-08 | 2026-09-16 | 5.15 | Mano de Obra 8.500 CLP/HH [12 h]; Materiales y Equipos [1 h] | 3,831,800 |
|  | 6 | **Equipamiento de Oficina** |  | 2026-09-10 | 2026-09-16 |  |  |  |
| 5.17 |  | Mobiliario oficina bodegaje (escritorios+sillas) | 6d | 2026-09-10 | 2026-09-16 | 5.16 | Mano de Obra 8.500 CLP/HH [8 h]; Materiales y Equipos [1 h] | 3,421,100 |
| 5.18 |  | Computadores gestión bodega (3 equipos) | 4d | 2026-09-12 | 2026-09-16 | 5.17 | Mano de Obra 8.500 CLP/HH [6 h]; Materiales y Equipos [1 h] | 3,489,600 |
| 5.19 |  | Impresora código de barras + lectores | 4d | 2026-09-12 | 2026-09-16 | 5.18 | Mano de Obra 8.500 CLP/HH [4 h]; Materiales y Equipos [1 h] | 1,313,800 |
|  | 7 | **Redes y Comunicaciones** |  | 2026-09-06 | 2026-09-13 |  |  |  |
| 5.20 |  | Instalación sistema WiFi industrial | 7d | 2026-09-06 | 2026-09-13 | 5.10 | Mano de Obra 8.500 CLP/HH [12 h]; Materiales y Equipos [1 h] | 2,463,300 |
|  | 8 | **Terminaciones SSHH y Oficinas** |  | 2026-09-04 | 2026-09-11 |  |  |  |
| 5.21 |  | Pintura interior muros SSHH | 7d | 2026-09-04 | 2026-09-11 | 4.28 | Mano de Obra 8.500 CLP/HH [24 h]; Materiales y Equipos [1 h] | 712,000 |
| 5.22 |  | Revestimiento cerámico SSHH | 7d | 2026-09-04 | 2026-09-11 | 5.21 | Mano de Obra 8.500 CLP/HH [48 h]; Materiales y Equipos [1 h] | 988,000 |
| 5.23 |  | Cielo falso planchas yeso-cartón oficinas | 7d | 2026-09-04 | 2026-09-11 | 5.21 | Mano de Obra 8.500 CLP/HH [45 h]; Materiales y Equipos [1 h] | 906,000 |

| ID | WBS | Activity | Duration | Start | Finish | Predecessors | Resources | Cost |
| --- | --- | --- | --- | --- | --- | --- | --- | --- |
|  | 9 | **Limpieza Final y Retiros** |  | 2026-09-16 | 2026-09-23 |  |  |  |
| 5.24 |  | Limpieza general de obra | 5d | 2026-09-16 | 2026-09-21 | 5.19, 5.16 | Mano de Obra 8.500 CLP/HH [24 h]; Materiales y Equipos [1 h] | 2,463,300 |
| 5.25 |  | Retiro de instalaciones de faenas | 5d | 2026-09-18 | 2026-09-23 | 5.24 | Mano de Obra 8.500 CLP/HH [16 h]; Materiales y Equipos [1 h] | 2,052,600 |
|  | 6 | **FASE 6: GESTIÓN DE PROYECTO Y CIERRE** |  | 2026-06-01 | 2026-09-28 |  |  |  |
|  | 1 | **Dirección y Administración de Proyecto** |  | 2026-06-01 | 2026-09-28 |  |  |  |
| 6.1 |  | Dirección de proyecto (DP) - mensual | 119d | 2026-06-01 | 2026-09-28 |  | Mano de Obra 12.000 CLP/HH [640 h] | 7,680,000 |
| 6.2 |  | Administración de contratos | 119d | 2026-06-01 | 2026-09-28 |  | Mano de Obra 12.000 CLP/HH [320 h] | 3,840,000 |
|  | 2 | **Aseguramiento y Control de Calidad** |  | 2026-06-01 | 2026-09-28 |  |  |  |
| 6.3 |  | Gestión de calidad (inspecciones + libros) | 119d | 2026-06-01 | 2026-09-28 |  | Mano de Obra 12.000 CLP/HH [320 h] | 3,840,000 |
|  | 3 | **Prevención de Riesgos** |  | 2026-06-01 | 2026-09-28 |  |  |  |
| 6.4 |  | Prevención de riesgos en obra | 119d | 2026-06-01 | 2026-09-28 |  | Mano de Obra 10.000 CLP/HH [704 h] | 7,040,000 |
|  | 4 | **Reportabilidad y Coordinación** |  | 2026-06-01 | 2026-09-28 |  |  |  |
| 6.6 |  | Reuniones de coordinación semanal | 119d | 2026-06-01 | 2026-09-28 | 6.1 | Mano de Obra 12.000 CLP/HH [51 h]; Materiales y Equipos [1 h] | 1,094,800 |
| 6.5 |  | Informes de avance mensuales al cliente | 90d | 2026-06-30 | 2026-09-28 | 6.1 | Mano de Obra 12.000 CLP/HH [32 h]; Materiales y Equipos [1 h] | 500,400 |
|  | 5 | **Control de Costos** |  | 2026-06-30 | 2026-09-28 |  |  |  |
| 6.7 |  | Control de costos y EVM mensual | 90d | 2026-06-30 | 2026-09-28 | 6.1 | Mano de Obra 12.000 CLP/HH [160 h] | 1,920,000 |
|  | 6 | **Recepción y Cierre** |  | 2026-09-16 | 2026-09-28 |  |  |  |
| 6.8 |  | Tramitación recepción definitiva DOM | 10d | 2026-09-16 | 2026-09-26 |  | Mano de Obra 12.000 CLP/HH [16 h]; Materiales y Equipos [1 h] | 428,900 |
| 6.9 |  | Entrega dossier técnico final | 5d | 2026-09-21 | 2026-09-26 | 6.7 | Mano de Obra 12.000 CLP/HH [24 h]; Materiales y Equipos [1 h] | 303,800 |
| 6.10 |  | Acta de entrega y recepción conforme | 2d | 2026-09-26 | 2026-09-28 | 6.9 | Mano de Obra 12.000 CLP/HH [8 h]; Materiales y Equipos [1 h] | 160,900 |
